Schedule from MS Project, 2019-06-03 to 2019-11-27, costs in €.

## Calendars

- Intranet_KlinikIT: Mon-Fri 08:00-12:00, 13:00-17:00; Sat-Sun off. Exceptions (off unless hours are given): 2019-10-03 (Tag der deutschen Einheit), 2019-10-31 (Reformationstag).

## Resources

| Resource | Group | Rate |
| --- | --- | --- |
| Lukas Schmidt | SC - Projektleiter | 156.25 |
| Robin Behrendt | SE - Teamleiter Entwicklung / Scrum Master | 143.75 |
| Leon König | E - Entwickler | 100 |
| Leon Kuß | E - Teamleiter Test | 100 |
| Gerrit Peitz | E - Entwickler | 100 |
| Luca Siekmann | E - Entwickler | 100 |
| Theo Test | E - Tester | 100 |
| Ina Integration | I - Systemintegrator | 93.75 |
| Anna Lyse | C - Business Analyst | 112.5 |
| Andreas Auswertung | C - Business Analyst | 112.5 |
| Tobias Training | C - Coach | 112.5 |
| Arthur Architektur | C - Software Architekt | 112.5 |
| Dennis Design | E - Software Designer | 100 |

## Schedule

| ID | WBS | Task | Type | Duration | Start | Finish | Predecessors | Total slack | Free slack | Constraint | Resources | Work | Cost |
| --- | --- | --- | --- | --- | --- | --- | --- | --- | --- | --- | --- | --- | --- |
| 1 | 1 | **Projekt "Intranet für die KlinikIT"** |  | 126d | 2019-06-03 08:00 | 2019-11-27 17:00 |  | 0d |  |  |  | 2658h | 300,000 |
| 2 | 1.1 | Projektstart | milestone | 0d | 2019-06-03 08:00 | 2019-06-03 08:00 |  | 0d |  | start no earlier than 2019-06-03 08:00 |  |  |  |
| 3 | 1.2 | Projektmanagement |  | 124d | 2019-06-03 08:00 | 2019-11-27 17:00 | 2 | 0d |  |  | Lukas Schmidt [12.5%] | 124h | 19,375 |
| 4 | 1.3 | **Analysephase** |  | 10d | 2019-06-03 08:00 | 2019-06-14 17:00 | 2 | 0d |  |  |  | 140h | 15,650 |
| 5 | 1.3.1 | Ist-Analyse durchführen |  | 5d | 2019-06-03 08:00 | 2019-06-07 17:00 | 2SS | 0d |  |  | Anna Lyse; Gerrit Peitz; Luca Siekmann; Robin Behrendt; Leon König | 102h | 11,375 |
| 6 | 1.3.2 | Anforderungen erheben |  | 5d | 2019-06-10 08:00 | 2019-06-14 17:00 | 5 | 0d |  |  | Anna Lyse | 38h | 4,275 |
| 7 | 1.3.3 | Freigabe der Anforderungen | milestone | 0d | 2019-06-14 17:00 | 2019-06-14 17:00 | 6 | 0d |  |  |  |  |  |
| 8 | 1.4 | **Konzeptionsphase** |  | 9d | 2019-06-17 08:00 | 2019-06-27 17:00 | 7 | 0d |  |  |  | 86h | 9,900 |
| 9 | 1.4.1 | Grobkonzept vervollständigen |  | 2d | 2019-06-17 08:00 | 2019-06-18 17:00 | 7 | 0d |  |  | Arthur Architektur | 16h | 1,800 |
| 10 | 1.4.2 | Feinkonzept erstellen |  | 5d | 2019-06-19 08:00 | 2019-06-25 17:00 | 9 | 0d |  |  | Dennis Design | 38h | 3,800 |
| 11 | 1.4.3 | Berechtigungskonzept erstellen |  | 2d | 2019-06-19 08:00 | 2019-06-20 17:00 | 9 | 3d |  |  | Anna Lyse | 16h | 1,800 |
| 12 | 1.4.4 | Product-Backlog anlegen |  | 2d | 2019-06-26 08:00 | 2019-06-27 17:00 | 10, 11 | 0d |  |  | Lukas Schmidt | 16h | 2,500 |
| 13 | 1.4.5 | Konzepte und Arbeitspakete erstellt und abgestimmt | milestone | 0d | 2019-06-27 17:00 | 2019-06-27 17:00 | 9, 10, 11, 12 | 0d |  |  |  |  |  |
| 14 | 1.5 | **Realisierungsphase** |  | 76.5d | 2019-07-01 08:00 | 2019-10-16 12:00 | 8FS+1d | 0d |  |  |  | 2308h | 255,075 |
| 15 | 1.5.1 | **Entwicklungssprints** |  | 69d | 2019-07-01 08:00 | 2019-10-04 17:00 | 8FS+1d | 0d |  |  |  | 2234h | 247,150 |
| 16 | 1.5.1.1 | **Sprint 1** |  | 10d | 2019-07-01 08:00 | 2019-07-12 17:00 | 8FS+1d | 0d |  |  |  | 336h | 37,262.5 |
| 17 | 1.5.1.1.1 | Sprint Planning 1 |  | 0.5d | 2019-07-01 08:00 | 2019-07-01 12:00 | 8FS+1d | 0d |  |  | Lukas Schmidt; Leon König; Leon Kuß; Luca Siekmann; Robin Behrendt; Gerrit Peitz | 20h | 2,287.5 |
| 18 | 1.5.1.1.2 | Kernsystem implementieren |  | 8d | 2019-07-01 13:00 | 2019-07-11 12:00 | 17 | 0.5d | 0d |  | Robin Behrendt; Gerrit Peitz; Leon König; Luca Siekmann | 240h | 26,625 |
| 19 | 1.5.1.1.3 | Test vorbereiten 1 |  | 1.5d | 2019-07-01 13:00 | 2019-07-02 17:00 | 17 | 8d |  |  | Theo Test; Leon Kuß | 24h | 2,400 |
| 20 | 1.5.1.1.4 | Refinement 1 |  | 0.5d | 2019-07-08 08:00 | 2019-07-08 12:00 | 17SS+5d | 4.5d |  |  | Leon König; Luca Siekmann; Lukas Schmidt; Robin Behrendt; Gerrit Peitz | 18h | 2,087.5 |
| 21 | 1.5.1.1.5 | Betriebshandbuch erstellen 1 |  | 1d | 2019-07-11 13:00 | 2019-07-12 12:00 | 18 | 0.5d |  |  | Robin Behrendt; Gerrit Peitz; Leon König; Luca Siekmann | 16h | 1,775 |
| 22 | 1.5.1.1.6 | Sprint Review & Retrospektive 1 |  | 0.5d | 2019-07-12 13:00 | 2019-07-12 17:00 | 17SS+9.5d | 0d |  |  | Lukas Schmidt; Leon König; Luca Siekmann; Robin Behrendt; Gerrit Peitz | 18h | 2,087.5 |
| 23 | 1.5.1.1.7 | Kernsystem fertig implementiert | milestone | 0d | 2019-07-11 12:00 | 2019-07-11 12:00 | 18 | 1.5d |  |  |  |  |  |
| 24 | 1.5.1.2 | **Sprint 2** |  | 10d | 2019-07-15 08:00 | 2019-07-26 17:00 | 16 | 0d |  |  |  | 326h | 36,312.5 |
| 25 | 1.5.1.2.1 | Sprint Planning 2 |  | 0.5d | 2019-07-15 08:00 | 2019-07-15 12:00 | 16 | 0d |  |  | Lukas Schmidt; Leon König; Leon Kuß; Robin Behrendt; Gerrit Peitz | 16h | 1,887.5 |
| 26 | 1.5.1.2.2 | Prozesse implementieren 1 |  | 8d | 2019-07-15 13:00 | 2019-07-25 12:00 | 25 | 0.5d | 0d |  | Robin Behrendt; Gerrit Peitz; Leon König; Luca Siekmann | 198h | 22,425 |
| 27 | 1.5.1.2.3 | Test durchführen 1 |  | 1.5d | 2019-07-15 08:00 | 2019-07-16 12:00 | 19 | 1.5d | 0d |  | Theo Test; Leon Kuß | 12h | 1,200 |
| 28 | 1.5.1.2.4 | Test vorbereiten 2 |  | 2.5d | 2019-07-16 13:00 | 2019-07-18 17:00 | 27 | 6d |  |  | Theo Test [80%]; Leon Kuß | 24h | 2,400 |
| 29 | 1.5.1.2.5 | Fehler beheben 1 |  | 1d | 2019-07-17 08:00 | 2019-07-17 17:00 | 27FS+0.5d | 1.5d | 0d |  | Gerrit Peitz [108.3%] | 8h | 800 |
| 30 | 1.5.1.2.6 | Software installieren 1 |  | 0.5d | 2019-07-18 08:00 | 2019-07-18 12:00 | 29 | 1.5d | 0d |  | Ina Integration | 4h | 375 |
| 31 | 1.5.1.2.7 | Nutzerakzeptanzumfrage durchführen 1 |  | 0.5d | 2019-07-22 13:00 | 2019-07-22 17:00 | 30FS+2d | 1.5d | 0d |  | Andreas Auswertung | 4h | 450 |
| 32 | 1.5.1.2.8 | Nutzerakzeptanzumfrage auswerten 1 |  | 0.5d | 2019-07-25 08:00 | 2019-07-25 12:00 | 31FS+2d | 1.5d |  |  | Andreas Auswertung | 4h | 450 |
| 33 | 1.5.1.2.9 | Performanceziele überprüfen 1 |  | 0.5d | 2019-07-18 13:00 | 2019-07-18 17:00 | 30 | 6d |  |  | Ina Integration | 4h | 375 |
| 34 | 1.5.1.2.10 | Refinement 2 |  | 0.5d | 2019-07-22 08:00 | 2019-07-22 12:00 | 25SS+5d | 4.5d |  |  | Leon König; Luca Siekmann; Lukas Schmidt; Robin Behrendt; Gerrit Peitz | 18h | 2,087.5 |
| 35 | 1.5.1.2.11 | Betriebshandbuch erstellen 2 |  | 1d | 2019-07-25 13:00 | 2019-07-26 12:00 | 26 | 0.5d |  |  | Robin Behrendt [63.6%]; Gerrit Peitz [63.6%]; Leon König [63.6%]; Luca Siekmann [63.6%] | 16h | 1,775 |
| 36 | 1.5.1.2.12 | Sprint Review & Retrospektive 2 |  | 0.5d | 2019-07-26 13:00 | 2019-07-26 17:00 | 25SS+9.5d | 0d |  |  | Lukas Schmidt; Leon König; Luca Siekmann; Robin Behrendt; Gerrit Peitz | 18h | 2,087.5 |

Notes:
- 16: FERTIG
- 17: Feste Dauer
- 18: Feste Einheiten
- 19: Feste Arbeit
- 20: Feste Dauer
- 21: Feste Einheiten
- 22: Feste Dauer
- 25: Feste Dauer
- 26: Feste Einheiten
- 27: Feste Arbeit
- 28: Feste Arbeit
- 29: Feste Arbeit
- 30: Feste Einheiten
- 31: Feste Arbeit
- 32: Feste Arbeit
- 33: Feste Arbeit
- 34: Feste Dauer
- 35: Feste Einheiten
- 36: Feste Dauer

| ID | WBS | Task | Type | Duration | Start | Finish | Predecessors | Total slack | Free slack | Resources | Work | Cost |
| --- | --- | --- | --- | --- | --- | --- | --- | --- | --- | --- | --- | --- |
| 37 | 1.5.1.3 | **Sprint 3** |  | 10d | 2019-07-29 08:00 | 2019-08-09 17:00 | 24 | 0d |  |  | 326h | 36,312.5 |
| 38 | 1.5.1.3.1 | Sprint Planning 3 |  | 0.5d | 2019-07-29 08:00 | 2019-07-29 12:00 | 24 | 0d |  | Gerrit Peitz; Leon König; Leon Kuß; Luca Siekmann; Lukas Schmidt; Robin Behrendt | 20h | 2,287.5 |
| 39 | 1.5.1.3.2 | Prozesse implementieren 2 |  | 8d | 2019-07-29 13:00 | 2019-08-08 12:00 | 38 | 0d |  | Gerrit Peitz; Leon König; Luca Siekmann; Robin Behrendt | 206h | 23,225 |
| 40 | 1.5.1.3.3 | Test durchführen 2 |  | 1.5d | 2019-07-29 08:00 | 2019-07-30 12:00 | 28 | 2d | 0d | Theo Test; Leon Kuß | 12h | 1,200 |
| 41 | 1.5.1.3.4 | Test vorbereiten 3 |  | 2.5d | 2019-07-30 13:00 | 2019-08-01 17:00 | 40 | 9.5d | 6d | Theo Test [80%]; Leon Kuß | 24h | 2,400 |
| 42 | 1.5.1.3.5 | Fehler beheben 2 |  | 1d | 2019-07-31 08:00 | 2019-07-31 17:00 | 40FS+0.5d | 2d | 0d | Leon König [200%] | 8h | 800 |
| 43 | 1.5.1.3.6 | Software installieren 2 |  | 0.5d | 2019-08-01 08:00 | 2019-08-01 12:00 | 42 | 5d | 0d | Ina Integration | 4h | 375 |
| 44 | 1.5.1.3.7 | Nutzerakzeptanzumfrage durchführen 2 |  | 0.5d | 2019-08-05 13:00 | 2019-08-05 17:00 | 43FS+2d | 5d | 0d | Andreas Auswertung | 4h | 450 |
| 45 | 1.5.1.3.8 | Nutzerakzeptanzumfrage auswerten 2 |  | 0.5d | 2019-08-08 08:00 | 2019-08-08 12:00 | 44FS+2d | 5d |  | Andreas Auswertung | 4h | 450 |
| 46 | 1.5.1.3.9 | Performanceziele überprüfen 2 |  | 0.5d | 2019-08-01 13:00 | 2019-08-01 17:00 | 43 | 9.5d |  | Ina Integration | 4h | 375 |
| 47 | 1.5.1.3.10 | Refinement 3 |  | 0.5d | 2019-08-05 08:00 | 2019-08-05 12:00 | 38SS+5d | 8d |  | Gerrit Peitz; Luca Siekmann; Lukas Schmidt; Robin Behrendt | 14h | 1,687.5 |
| 48 | 1.5.1.3.11 | Betriebshandbuch erstellen 3 |  | 1d | 2019-08-08 13:00 | 2019-08-09 12:00 | 39 | 4d |  | Gerrit Peitz; Luca Siekmann; Robin Behrendt | 12h | 1,375 |
| 49 | 1.5.1.3.12 | Sprint Review & Retrospektive 3 |  | 0.5d | 2019-08-09 13:00 | 2019-08-09 17:00 | 38SS+9.5d | 3.5d |  | Gerrit Peitz; Luca Siekmann; Lukas Schmidt; Robin Behrendt | 14h | 1,687.5 |
| 50 | 1.5.1.4 | **Sprint 4** |  | 10d | 2019-08-12 08:00 | 2019-08-23 17:00 | 37 | 3.5d | 0d |  | 326h | 36,312.5 |
| 51 | 1.5.1.4.1 | Sprint Planning 4 |  | 0.5d | 2019-08-12 08:00 | 2019-08-12 12:00 | 37 | 4.5d | 0d | Gerrit Peitz; Leon Kuß; Luca Siekmann; Lukas Schmidt; Robin Behrendt | 16h | 1,887.5 |
| 52 | 1.5.1.4.2 | Prozesse implementieren 3 |  | 4.5d | 2019-08-12 13:00 | 2019-08-16 17:00 | 51 | 5d | 0d | Gerrit Peitz; Luca Siekmann; Robin Behrendt | 94h | 10,887.5 |
| 53 | 1.5.1.4.3 | "Schmankerl" implementieren 1 |  | 3.5d | 2019-08-19 08:00 | 2019-08-22 12:00 | 51, 52 | 5d | 0d | Gerrit Peitz; Leon König; Luca Siekmann; Robin Behrendt | 104h | 11,537.5 |
| 54 | 1.5.1.4.4 | Test durchführen 3 |  | 1.5d | 2019-08-12 08:00 | 2019-08-13 12:00 | 41 | 3.5d | 0d | Theo Test [140%]; Leon Kuß | 12h | 1,200 |
| 55 | 1.5.1.4.5 | Test vorbereiten 4 |  | 2.5d | 2019-08-13 13:00 | 2019-08-15 17:00 | 54 | 10.5d | 6d | Theo Test; Leon Kuß | 24h | 2,400 |
| 56 | 1.5.1.4.6 | Fehler beheben 3 |  | 1d | 2019-08-14 08:00 | 2019-08-14 17:00 | 54FS+0.5d | 6d | 0d | Luca Siekmann | 8h | 800 |
| 57 | 1.5.1.4.7 | Software installieren 3 |  | 0.5d | 2019-08-15 08:00 | 2019-08-15 12:00 | 56 | 6d | 0d | Ina Integration | 4h | 375 |
| 58 | 1.5.1.4.8 | Nutzerakzeptanzumfrage durchführen 3 |  | 0.5d | 2019-08-19 13:00 | 2019-08-19 17:00 | 57FS+2d | 6d | 0d | Andreas Auswertung | 4h | 450 |
| 59 | 1.5.1.4.9 | Nutzerakzeptanzumfrage auswerten 3 |  | 0.5d | 2019-08-22 08:00 | 2019-08-22 12:00 | 58FS+2d | 6d |  | Andreas Auswertung | 4h | 450 |
| 60 | 1.5.1.4.10 | Performanceziele überprüfen 3 |  | 0.5d | 2019-08-15 13:00 | 2019-08-15 17:00 | 57 | 10.5d |  | Ina Integration | 4h | 375 |
| 61 | 1.5.1.4.11 | Refinement 4 |  | 0.5d | 2019-08-19 08:00 | 2019-08-19 12:00 | 51SS+5d | 9d |  | Gerrit Peitz; Leon König; Luca Siekmann; Robin Behrendt; Lukas Schmidt | 18h | 2,087.5 |
| 62 | 1.5.1.4.12 | Betriebshandbuch erstellen 4 |  | 1d | 2019-08-22 13:00 | 2019-08-23 12:00 | 53 | 5d |  | Gerrit Peitz; Leon König; Luca Siekmann; Robin Behrendt | 16h | 1,775 |
| 63 | 1.5.1.4.13 | Sprint Review & Retrospektive 4 |  | 0.5d | 2019-08-23 13:00 | 2019-08-23 17:00 | 51SS+9.5d | 4.5d |  | Gerrit Peitz; Leon König; Luca Siekmann; Lukas Schmidt; Robin Behrendt | 18h | 2,087.5 |
| 64 | 1.5.1.4.14 | Prozesse fertig implementiert | milestone | 0d | 2019-08-16 17:00 | 2019-08-16 17:00 | 52 | 9.5d |  |  |  |  |

Notes:
- 38: Feste Dauer
- 39: Feste Einheiten
- 40: Feste Arbeit
- 41: Feste Arbeit
- 42: Feste Arbeit
- 43: Feste Einheiten
- 44: Feste Arbeit
- 45: Feste Arbeit
- 46: Feste Arbeit
- 47: Feste Dauer
- 48: Feste Einheiten
- 49: Feste Dauer
- 51: Feste Dauer
- 52: Feste Einheiten
- 54: Feste Arbeit
- 55: Feste Arbeit
- 56: Feste Arbeit
- 57: Feste Einheiten
- 58: Feste Arbeit
- 59: Feste Arbeit
- 60: Feste Arbeit
- 61: Feste Dauer
- 62: Feste Einheiten
- 63: Feste Dauer

| ID | WBS | Task | Type | Duration | Start | Finish | Predecessors | Total slack | Free slack | Resources | Work | Cost |
| --- | --- | --- | --- | --- | --- | --- | --- | --- | --- | --- | --- | --- |
| 65 | 1.5.1.5 | **Sprint 5** |  | 10d | 2019-08-23 17:00 | 2019-09-06 17:00 | 50 | 4.5d | 0d |  | 326h | 36,312.5 |
| 66 | 1.5.1.5.1 | Sprint Planning 5 |  | 0.5d | 2019-08-26 08:00 | 2019-08-26 12:00 | 50 | 4.5d | 0d | Gerrit Peitz; Leon König; Leon Kuß; Luca Siekmann; Lukas Schmidt; Robin Behrendt | 20h | 2,287.5 |
| 67 | 1.5.1.5.2 | "Schmankerl" implementieren 2 |  | 8d | 2019-08-26 13:00 | 2019-09-05 12:00 | 66 | 11.5d | 0d | Gerrit Peitz; Leon König; Luca Siekmann; Robin Behrendt | 206h | 23,225 |
| 68 | 1.5.1.5.3 | Test durchführen 4 |  | 1.5d | 2019-08-26 08:00 | 2019-08-27 12:00 | 55 | 20d | 0d | Theo Test; Leon Kuß | 12h | 1,200 |
| 69 | 1.5.1.5.4 | Test vorbereiten 5 |  | 2.5d | 2019-08-27 13:00 | 2019-08-29 17:00 | 68 | 24.5d | 6d | Theo Test; Leon Kuß | 24h | 2,400 |
| 70 | 1.5.1.5.5 | Fehler beheben 4 |  | 1d | 2019-08-28 08:00 | 2019-08-28 17:00 | 68FS+0.5d | 20d | 0d | Gerrit Peitz | 8h | 800 |
| 71 | 1.5.1.5.6 | Software installieren 4 |  | 0.5d | 2019-08-29 08:00 | 2019-08-29 12:00 | 70 | 20d | 0d | Ina Integration | 4h | 375 |
| 72 | 1.5.1.5.7 | Nutzerakzeptanzumfrage durchführen 4 |  | 0.5d | 2019-09-02 13:00 | 2019-09-02 17:00 | 71FS+2d | 20d | 0d | Andreas Auswertung | 4h | 450 |
| 73 | 1.5.1.5.8 | Nutzerakzeptanzumfrage auswerten 4 |  | 0.5d | 2019-09-05 08:00 | 2019-09-05 12:00 | 72FS+2d | 20d |  | Andreas Auswertung | 4h | 450 |
| 74 | 1.5.1.5.9 | Performanceziele überprüfen 4 |  | 0.5d | 2019-08-29 13:00 | 2019-08-29 17:00 | 71 | 24.5d |  | Ina Integration | 4h | 375 |
| 75 | 1.5.1.5.10 | Refinement 5 |  | 0.5d | 2019-08-30 17:00 | 2019-09-02 12:00 | 66SS+5d | 20.5d |  | Gerrit Peitz; Leon König; Luca Siekmann; Lukas Schmidt; Robin Behrendt | 14h | 1,687.5 |
| 76 | 1.5.1.5.11 | Betriebshandbuch erstellen 5 |  | 1d | 2019-09-05 13:00 | 2019-09-06 12:00 | 67 | 16.5d |  | Leon König; Luca Siekmann; Robin Behrendt | 12h | 1,375 |
| 77 | 1.5.1.5.12 | Sprint Review & Retrospektive 5 |  | 0.5d | 2019-09-06 12:00 | 2019-09-06 17:00 | 66SS+9.5d | 16d |  | Gerrit Peitz; Leon König; Luca Siekmann; Lukas Schmidt; Robin Behrendt | 14h | 1,687.5 |
| 78 | 1.5.1.5.13 | "Schmankerl" fertig implementiert | milestone | 0d | 2019-08-23 17:00 | 2019-08-23 17:00 |  | 28.5d |  |  |  |  |
| 79 | 1.5.1.6 | **Sprint 6** |  | 10d | 2019-09-09 08:00 | 2019-09-20 17:00 | 65 | 18.5d | 0d |  | 326h | 36,312.5 |
| 80 | 1.5.1.6.1 | Sprint Planning 6 |  | 0.5d | 2019-09-09 08:00 | 2019-09-09 12:00 | 65 | 18.5d | 0d | Leon König; Leon Kuß; Luca Siekmann; Lukas Schmidt; Robin Behrendt | 16h | 1,887.5 |
| 81 | 1.5.1.6.2 | Zusatzfunktionen implementieren 1 |  | 8d | 2019-09-09 13:00 | 2019-09-19 12:00 | 80 | 19d | 0d | Gerrit Peitz; Leon König; Luca Siekmann; Robin Behrendt | 198h | 22,425 |
| 82 | 1.5.1.6.3 | Test durchführen 5 |  | 1.5d | 2019-09-09 08:00 | 2019-09-10 12:00 | 69 | 20d | 0d | Theo Test; Leon Kuß | 12h | 1,200 |
| 83 | 1.5.1.6.4 | Test vorbereiten 6 |  | 2.5d | 2019-09-10 13:00 | 2019-09-12 17:00 | 82 | 24.5d | 6d | Theo Test [150%]; Leon Kuß [150%] | 24h | 2,400 |
| 84 | 1.5.1.6.5 | Fehler beheben 5 |  | 1d | 2019-09-11 08:00 | 2019-09-11 17:00 | 82FS+0.5d | 20d | 0d | Leon König | 8h | 800 |
| 85 | 1.5.1.6.6 | Software installieren 5 |  | 0.5d | 2019-09-12 08:00 | 2019-09-12 12:00 | 84 | 20d | 0d | Ina Integration | 4h | 375 |
| 86 | 1.5.1.6.7 | Nutzerakzeptanzumfrage durchführen 5 |  | 0.5d | 2019-09-16 13:00 | 2019-09-16 17:00 | 85FS+2d | 20d | 0d | Andreas Auswertung | 4h | 450 |
| 87 | 1.5.1.6.8 | Nutzerakzeptanzumfrage auswerten 5 |  | 0.5d | 2019-09-19 08:00 | 2019-09-19 12:00 | 86FS+2d | 20d |  | Andreas Auswertung | 4h | 450 |
| 88 | 1.5.1.6.9 | Performanceziele überprüfen 5 |  | 0.5d | 2019-09-12 13:00 | 2019-09-12 17:00 | 85 | 24.5d |  | Ina Integration | 4h | 375 |
| 89 | 1.5.1.6.10 | Refinement 6 |  | 0.5d | 2019-09-16 08:00 | 2019-09-16 12:00 | 80SS+5d | 23d |  | Gerrit Peitz; Leon König; Luca Siekmann; Lukas Schmidt; Robin Behrendt | 18h | 2,087.5 |
| 90 | 1.5.1.6.11 | Betriebshandbuch erstellen 6 |  | 1d | 2019-09-19 13:00 | 2019-09-20 12:00 | 81 | 19d |  | Gerrit Peitz; Leon König; Luca Siekmann; Robin Behrendt | 16h | 1,775 |
| 91 | 1.5.1.6.12 | Sprint Review & Retrospektive 6 |  | 0.5d | 2019-09-20 13:00 | 2019-09-20 17:00 | 80SS+9.5d | 18.5d |  | Gerrit Peitz; Leon König; Luca Siekmann; Lukas Schmidt; Robin Behrendt | 18h | 2,087.5 |

Notes:
- 66: Feste Dauer
- 67: Feste Einheiten
- 68: Feste Arbeit
- 69: Feste Arbeit
- 70: Feste Arbeit
- 71: Feste Einheiten
- 72: Feste Arbeit
- 73: Feste Arbeit
- 74: Feste Arbeit
- 75: Feste Dauer
- 76: Feste Einheiten
- 77: Feste Dauer
- 80: Feste Dauer
- 81: Feste Einheiten
- 82: Feste Arbeit
- 83: Feste Arbeit
- 84: Feste Arbeit
- 85: Feste Einheiten
- 86: Feste Arbeit
- 87: Feste Arbeit
- 88: Feste Arbeit
- 89: Feste Dauer
- 90: Feste Einheiten
- 91: Feste Dauer

| ID | WBS | Task | Type | Duration | Start | Finish | Predecessors | Total slack | Free slack | Resources | Work | Cost |
| --- | --- | --- | --- | --- | --- | --- | --- | --- | --- | --- | --- | --- |
| 92 | 1.5.1.7 | **Sprint 7** |  | 9d | 2019-09-23 08:00 | 2019-10-04 17:00 | 79 | 18.5d | 0d |  | 268h | 28,325 |
| 93 | 1.5.1.7.1 | Sprint Planning 7 |  | 0.5d | 2019-09-23 08:00 | 2019-09-23 12:00 | 79 | 18.5d | 0d | Gerrit Peitz; Leon König; Leon Kuß; Luca Siekmann; Lukas Schmidt | 16h | 1,712.5 |
| 94 | 1.5.1.7.2 | Zusatzfunktionen implementieren 2 |  | 7d | 2019-09-23 13:00 | 2019-10-02 12:00 | 93 | 19d | 0d | Gerrit Peitz; Leon König; Luca Siekmann; Robin Behrendt | 152h | 15,987.5 |
| 95 | 1.5.1.7.3 | Test durchführen 6 |  | 1.5d | 2019-09-23 08:00 | 2019-09-24 12:00 | 83 | 20d | 0d | Theo Test; Leon Kuß | 12h | 1,200 |
| 96 | 1.5.1.7.4 | Test vorbereiten 7 |  | 2.5d | 2019-09-24 13:00 | 2019-09-26 17:00 | 95 | 23.5d | 5d | Theo Test [150%]; Leon Kuß [150%] | 24h | 2,400 |
| 97 | 1.5.1.7.5 | Fehler beheben 6 |  | 1d | 2019-09-25 08:00 | 2019-09-25 17:00 | 95FS+0.5d | 20d | 0d | Luca Siekmann | 8h | 800 |
| 98 | 1.5.1.7.6 | Software installieren 6 |  | 0.5d | 2019-09-26 08:00 | 2019-09-26 12:00 | 97 | 20d | 0d | Ina Integration | 4h | 375 |
| 99 | 1.5.1.7.7 | Nutzerakzeptanzumfrage durchführen 6 |  | 0.5d | 2019-09-30 13:00 | 2019-09-30 17:00 | 98FS+2d | 20d | 0d | Andreas Auswertung | 4h | 450 |
| 100 | 1.5.1.7.8 | Nutzerakzeptanzumfrage auswerten 6 |  | 0.5d | 2019-10-02 08:00 | 2019-10-02 12:00 | 99FS+1d | 20d |  | Andreas Auswertung | 4h | 450 |
| 101 | 1.5.1.7.9 | Performanceziele überprüfen 6 |  | 0.5d | 2019-09-26 13:00 | 2019-09-26 17:00 | 98 | 23.5d |  | Ina Integration | 4h | 375 |
| 102 | 1.5.1.7.10 | Refinement 7 |  | 0.5d | 2019-09-30 08:00 | 2019-09-30 12:00 | 93SS+5d | 22d |  | Gerrit Peitz; Leon König; Luca Siekmann; Lukas Schmidt | 14h | 1,512.5 |
| 103 | 1.5.1.7.11 | Betriebshandbuch erstellen 7 |  | 1d | 2019-10-02 13:00 | 2019-10-04 12:00 | 94 | 19d |  | Gerrit Peitz; Leon König; Robin Behrendt | 12h | 1,375 |
| 104 | 1.5.1.7.12 | Sprint Review & Retrospektive 7 |  | 0.5d | 2019-10-04 13:00 | 2019-10-04 17:00 | 93SS+8.5d | 18.5d |  | Gerrit Peitz; Leon König; Lukas Schmidt; Robin Behrendt | 14h | 1,687.5 |
| 105 | 1.5.1.7.13 | Zusatzfunktionen fertig implementiert | milestone | 0d | 2019-10-02 12:00 | 2019-10-02 12:00 | 94 | 20d |  |  |  |  |
| 106 | 1.5.2 | Entwicklung abgeschlossen | milestone | 0d | 2019-10-04 17:00 | 2019-10-04 17:00 | 15 | 37d |  |  |  |  |
| 107 | 1.5.3 | **Finalisierungsphase** |  | 7.5d | 2019-10-07 08:00 | 2019-10-16 12:00 | 92 | 18.5d | 0d |  | 74h | 7,925 |
| 108 | 1.5.3.1 | Test durchführen 7 |  | 1d | 2019-10-07 08:00 | 2019-10-07 17:00 | 96 | 18.5d | 0d | Theo Test; Leon Kuß | 12h | 1,200 |
| 109 | 1.5.3.2 | Fehler beheben 7 |  | 1d | 2019-10-08 08:00 | 2019-10-08 17:00 | 108 | 18.5d | 0d | Leon König | 8h | 800 |
| 110 | 1.5.3.3 | Software installieren 7 |  | 0.5d | 2019-10-09 08:00 | 2019-10-09 12:00 | 109 | 18.5d | 0d | Ina Integration | 4h | 375 |
| 111 | 1.5.3.4 | Nutzerakzeptanzumfrage durchführen 7 |  | 0.5d | 2019-10-11 13:00 | 2019-10-11 17:00 | 110FS+2d | 18.5d | 0d | Andreas Auswertung | 4h | 450 |
| 112 | 1.5.3.5 | Nutzerakzeptanzumfrage auswerten 7 |  | 0.5d | 2019-10-16 08:00 | 2019-10-16 12:00 | 111FS+2d | 18.5d |  | Andreas Auswertung | 4h | 450 |
| 113 | 1.5.3.6 | Performanceziele überprüfen 7 |  | 0.5d | 2019-10-09 13:00 | 2019-10-09 17:00 | 110 | 23d | 0d | Ina Integration | 4h | 375 |
| 114 | 1.5.3.7 | Software eingeführt und abgenommen | milestone | 0d | 2019-10-09 17:00 | 2019-10-09 17:00 | 113 | 23d |  |  |  |  |
| 115 | 1.5.3.8 | Schulungskonzept erarbeiten |  | 5d | 2019-10-07 08:00 | 2019-10-11 17:00 | 92 | 21d |  | Tobias Training | 38h | 4,275 |
| 116 | 1.6 | Schulung durchführen |  | 10d | 2019-10-17 13:00 | 2019-11-01 12:00 | 107FS+1d | 18.5d | 0d |  |  |  |
| 117 | 1.7 | Projektabschluss | milestone | 0d | 2019-11-01 12:00 | 2019-11-01 12:00 | 116 | 18.5d |  |  |  |  |

Notes:
- 93: Feste Dauer
- 94: Feste Einheiten
- 95: Feste Arbeit
- 96: Feste Arbeit
- 97: Feste Arbeit
- 98: Feste Einheiten
- 99: Feste Arbeit
- 100: Feste Arbeit
- 101: Feste Arbeit
- 102: Feste Dauer
- 103: Feste Einheiten
- 104: Feste Dauer
- 108: Feste Arbeit
- 109: Feste Arbeit
- 110: Feste Einheiten
- 111: Feste Arbeit
- 112: Feste Arbeit
- 113: Feste Arbeit
- 115: Feste Arbeit
